# ProyectoABP

Schedule from MS Project, 2017-09-11 to 2018-05-30, costs in €, A marks actual dates.
Schlumberger

## Calendars

- Estándar: Mon-Fri 09:00-13:00, 15:00-19:00; Sat-Sun off.

## Resources

| Resource | Rate |
| --- | --- |
| Alexei | 20 |
| Adrián | 20 |
| Laura | 20 |
| Luis | 20 |
| Pablo | 20 |
| P |  |

## Schedule

| ID | WBS | Task | Type | Duration | Start | Finish | Predecessors | Complete | Remaining | Actual start | Baseline start | Baseline finish | Baseline duration | Total slack | Free slack | Constraint | Deadline | Resources | Work | Actual work | Cost | Baseline cost | Actual cost |
| --- | --- | --- | --- | --- | --- | --- | --- | --- | --- | --- | --- | --- | --- | --- | --- | --- | --- | --- | --- | --- | --- | --- | --- |
| 1 | 1 | **Hito 0** |  | 28d | 2017-09-11 09:00 | 2017-10-18 19:00 A |  | 100% |  | 2017-09-18 09:00 |  |  |  |  |  | finish no later than 2017-10-18 19:00 | 2017-10-18 19:00 |  | 123.78h | 123.78h | 2,475.6 |  | 2,475.6 |
| 2 | 1.1 | [PM] Rellenar documento de Concepto del proyecto |  | 1d | 2017-09-18 09:00 A | 2017-09-18 19:00 A |  | 100% |  |  |  |  |  |  |  | start no earlier than 2017-09-18 09:00 | 2017-10-18 19:00 | Adrián [20%]; Alexei [20%]; Laura [20%]; Luis [20%]; Pablo [20%] | 8h | 8h | 160 |  | 160 |
| 3 | 1.2 | [PM] Rellenar versión inicial del documento Especificación |  | 1d | 2017-09-19 09:00 A | 2017-09-19 19:00 A | 2 | 100% |  |  |  |  |  |  |  |  | 2017-10-18 19:00 | Adrián [20%]; Alexei [20%]; Laura [20%]; Luis [20%]; Pablo [20%] | 8h | 8h | 160 |  | 160 |
| 4 | 1.3 | [PM] Completar y revisar documento Especificación |  | 1d | 2017-09-20 09:00 A | 2017-09-20 19:00 A | 3 | 100% |  |  |  |  |  |  |  |  | 2017-10-18 19:00 | Adrián [20%]; Alexei [20%]; Laura [20%]; Luis [20%]; Pablo [20%] | 8h | 8h | 160 |  | 160 |
| 5 | 1.4 | **[PM] Elaborar el Presupuesto (hoja de cálculo)** |  | 6d | 2017-09-21 09:00 A | 2017-09-28 19:00 A | 2 | 100% |  |  |  |  |  |  |  |  | 2017-10-18 19:00 |  | 46.5h | 46.5h | 930 |  | 930 |
| 6 | 1.4.1 | [PM] Rellenar del presupuesto |  | 3.75d | 2017-09-25 11:00 A | 2017-09-28 19:00 A | 8 | 100% |  |  |  |  |  |  |  |  |  | Adrián [20%]; Alexei [20%]; Laura [20%]; Luis [20%]; Pablo [20%] | 30h | 30h | 600 |  | 600 |
| 7 | 1.4.2 | [PM] Reunirse con profesores |  | 2d | 2017-09-21 09:00 A | 2017-09-22 19:00 A | 2 | 100% |  |  |  |  |  |  |  |  |  | Adrián [20%]; Alexei [20%]; Laura [20%]; Luis [20%]; Pablo [20%] | 16h | 16h | 320 |  | 320 |
| 8 | 1.4.3 | [PM] Rellenar documentos adicionales |  | 0.25d | 2017-09-25 09:00 A | 2017-09-25 11:00 A | 7 | 100% |  |  |  |  |  |  |  |  |  | Adrián [5%]; Alexei [5%]; Laura [5%]; Luis [5%]; Pablo [5%] | 0.5h | 0.5h | 10 |  | 10 |
| 9 | 1.5 | [PM] Crear WBS del proyecto en Project |  | 3d | 2017-09-29 09:00 A | 2017-10-03 19:00 A | 5, 6, 7, 8 | 100% |  |  |  |  |  |  |  |  | 2017-10-18 19:00 | Adrián | 24h | 24h | 480 |  | 480 |
| 10 | 1.6 | [PM] Crear plan general (Tareas y precedencias básicas) en Project |  | 3d | 2017-10-16 09:00 A | 2017-10-18 19:00 A | 9 | 100% |  |  |  |  |  |  |  | finish no earlier than 2017-10-18 19:00 | 2017-10-18 19:00 | Alexei | 24h | 24h | 480 |  | 480 |
| 11 | 1.7 | [TDS] Elaboración Cue Sheet inicial |  | 0.88d | 2017-10-04 09:00 A | 2017-10-04 18:02 A |  | 100% |  |  |  |  |  |  |  | start no earlier than 2017-10-04 09:00 | 2017-10-18 19:00 | Adrián [25%]; Luis [25%]; Pablo [25%] | 5.28h | 5.28h | 105.6 |  | 105.6 |
| 12 | 2 | **Hito 1** |  | 53.25d? | 2017-10-19 15:00 A | 2018-01-02 17:00 | 1 | 11% | 47.46d? |  |  |  |  | 106.25d | 3.25d |  | 2018-01-12 19:00 |  | 188.05h | 42.44h | 3,760.93 |  | 848.88 |
| 13 | 2.1 | **Iteración 1** |  | 9.25d | 2017-10-19 15:00 A | 2017-11-01 17:00 | 1 | 98% | 0.14d |  | 2017-10-19 15:00 | 2017-11-01 13:00 | 9d | 7.05d | 0.25d |  |  |  | 43.22h | 42.44h | 864.48 | 993.36 | 848.88 |
| 14 | 2.1.1 | [PM] Registrar tiempos y % de realización de tareas en Project (1/5) |  | 8.5d | 2017-10-19 15:00 A | 2017-10-31 19:00 A |  | 100% |  |  | 2017-10-19 15:00 | 2017-10-31 19:00 | 8.5d |  |  | finish no earlier than 2017-10-31 19:00 |  | Adrián [1%]; Alexei [1%]; Laura [1%]; Luis [1%]; Pablo [1%] | 3.4h | 3.4h | 68 | 68 | 68 |
| 15 | 2.1.2 | [PD] Bocetar cartel |  | 0.75d | 2017-10-20 09:00 A | 2017-10-20 17:00 A |  | 100% |  |  | 2017-10-20 09:00 | 2017-10-20 17:00 | 0.75d |  |  | start no earlier than 2017-10-20 09:00 |  | Alexei [25%]; Laura [25%]; Luis [25%] | 4.5h | 4.5h | 90 | 90 | 90 |
| 16 | 2.1.3 | [TAG] Instalar librería matemática (glm/glmatriz) |  | 0.5d | 2017-10-24 09:00 A | 2017-10-24 13:00 A |  | 100% |  |  | 2017-10-24 09:00 | 2017-10-24 13:00 | 0.5d |  |  | start no earlier than 2017-10-24 09:00 |  | Adrián [8%]; Alexei [8%]; Laura [8%]; Luis [8%]; Pablo [8%] | 1.6h | 1.6h | 32 | 32 | 32 |
| 17 | 2.1.4 | [TAG] Instalar librería de lectura de mallas (assimp…) |  | 1.25d | 2017-10-24 17:00 A | 2017-10-25 19:00 A |  | 100% |  |  | 2017-10-24 17:00 | 2017-10-25 19:00 | 1.25d |  |  | finish no earlier than 2017-10-25 19:00 |  | Adrián [13%]; Alexei [13%]; Laura [13%]; Luis [13%]; Pablo [13%] | 6.5h | 6.5h | 130 | 130 | 130 |
| 18 | 2.1.5 | [TAG] Instalar librería de entrada/salida (SFML…) |  | 1.25d | 2017-10-24 17:00 A | 2017-10-25 19:00 A |  | 100% |  |  | 2017-10-24 17:00 | 2017-10-25 19:00 | 1.25d |  |  | finish no earlier than 2017-10-25 19:00 |  | Adrián [13%]; Alexei [13%]; Laura [13%]; Luis [13%]; Pablo [13%] | 6.5h | 6.5h | 130 | 130 | 130 |
| 19 | 2.1.6 | [PM] Detallar plan iteraciones del mes de Noviembre. Creación Subtareas y precedencias en Project (1/2) |  | 1.2d | 2017-10-24 09:00 A | 2017-10-25 10:36 A | 10 | 100% |  |  | 2017-10-24 09:00 | 2017-10-26 12:12 | 2.4d |  |  | start no earlier than 2017-10-24 09:00 |  | Adrián [21%]; Alexei [21%]; Laura [5%]; Luis [5%]; Pablo [5%] | 5.47h | 5.47h | 109.44 | 218.88 | 109.44 |
| 20 | 2.1.7 | [TDS] Añadir elementos sonoros a la Cue Sheet (1/5) |  | 0.25d | 2017-10-26 09:00 | 2017-10-26 11:00 | 11 |  |  |  | 2017-10-26 09:00 | 2017-10-26 11:00 | 0.25d | 11.55d |  | start no earlier than 2017-10-26 09:00 |  | Luis [13%]; Pablo [13%]; Adrián [13%] | 0.78h |  | 15.6 | 15.6 |  |
| 21 | 2.1.8 | [PD] Bocetar logo |  | 0.75d | 2017-10-27 09:00 A | 2017-10-27 17:00 A |  | 100% |  |  | 2017-10-27 09:00 | 2017-10-27 17:00 | 0.75d |  |  | start no earlier than 2017-10-27 09:00 |  | Alexei [25%]; Laura [25%]; Luis [25%] | 4.5h | 4.5h | 90 | 90 | 90 |
| 22 | 2.1.9 | [PM] Detallar plan iteraciones del mes de Noviembre. Asignar recursos a las tareas en Project (1/2) |  | 1.2d | 2017-10-27 09:00 A | 2017-10-30 10:36 A | 19 | 100% |  |  | 2017-10-27 09:00 | 2017-10-31 12:12 | 2.4d |  |  | start no earlier than 2017-10-27 09:00 |  | Adrián [21%]; Alexei [21%]; Laura [5%]; Luis [5%]; Pablo [5%] | 5.47h | 5.47h | 109.44 | 218.88 | 109.44 |
| 23 | 2.1.10 | [PM] Realizar informe iteración 1 |  | 0.75d | 2017-11-01 09:00 A | 2017-11-01 17:00 A | 19, 22, 15, 21 | 100% |  |  | 2017-11-01 09:00 | 2017-11-01 13:00 | 0.5d |  |  | start no earlier than 2017-11-01 09:00 |  | Laura [25%]; Luis [25%]; Pablo [25%] | 4.5h | 4.5h | 90 |  | 90 |
| 24 | 2.1.11 | Objetivo Iteración 1 | milestone | 0d | 2017-11-01 17:00 | 2017-11-01 17:00 | 23 |  |  |  | 2017-11-01 13:00 | 2017-11-01 13:00 | 0d | 7.05d |  |  |  |  |  |  |  |  |  |

| ID | WBS | Task | Type | Duration | Start | Finish | Predecessors | Baseline 1 start | Baseline 1 finish | Total slack | Free slack | Constraint | Resources | Work | Cost |
| --- | --- | --- | --- | --- | --- | --- | --- | --- | --- | --- | --- | --- | --- | --- | --- |
| 25 | 2.2 | **Iteración 2** |  | 10d | 2017-11-02 09:00 | 2017-11-15 19:00 | 13 | 2017-11-02 09:00 | 2017-11-15 19:00 |  |  |  |  | 144.82h | 2,896.45 |
| 26 | 2.2.1 | [PM] Registrar tiempos y % de realización de tareas en Project (2/5) |  | 9.5d | 2017-11-01 15:00 | 2017-11-14 19:00 |  | 2017-11-01 15:00 | 2017-11-14 19:00 | 7.3d | 0d | finish no earlier than 2017-11-14 19:00 | Adrián [1%]; Alexei [1%]; Laura [1%]; Luis [1%]; Pablo [1%] | 3.8h | 76 |
| 27 | 2.2.2 | [V1] Iniciar el documento de diseño de mecánicas de los NPCs |  | 0.5d | 2017-11-02 09:00 | 2017-11-02 13:00 |  | 2017-11-02 09:00 | 2017-11-02 13:00 | 12.8d | 2.5d |  | Adrián [13%]; Alexei [13%]; Laura [13%]; Luis [13%]; Pablo [13%] | 2.6h | 52 |
| 28 | 2.2.3 | [V1] Iniciar el documento de diseño de toma de decisión: espacio y métodos |  | 0.94d | 2017-11-02 09:00 | 2017-11-02 18:31 |  | 2017-11-02 09:00 | 2017-11-02 18:31 | 12.36d | 2.06d |  | Adrián [24%]; Alexei [24%]; Laura [24%]; Luis [24%]; Pablo [24%] | 9.02h | 180.48 |
| 29 | 2.2.4 | [V1] Iniciar el documento de diseño técnico del motor de IA |  | 0.94d | 2017-11-03 09:28 | 2017-11-03 19:00 |  | 2017-11-03 09:28 | 2017-11-03 19:00 | 14.3d | 1d | finish no earlier than 2017-11-03 19:00 | Adrián [24%]; Alexei [24%]; Laura [24%]; Luis [24%]; Pablo [24%] | 9.02h | 180.48 |
| 30 | 2.2.5 | [V2] Diseño inicial de la arquitectura basada en componentes |  | 0.5d | 2017-11-03 09:00 | 2017-11-03 13:00 |  | 2017-11-03 09:00 | 2017-11-03 13:00 | 14.8d | 7.5d | start no earlier than 2017-11-03 09:00 | Adrián [50%]; Alexei [50%]; Laura [50%]; Luis [50%]; Pablo [50%] | 10h | 200 |
| 31 | 2.2.6 | [RV] Bocetar los personajes |  | 0.25d | 2017-11-03 09:00 | 2017-11-03 11:00 |  | 2017-11-03 09:00 | 2017-11-03 11:00 | 148.75d |  | start no earlier than 2017-11-03 09:00 | Alexei [25%]; Laura [25%]; Luis [25%]; Adrián [13%]; Pablo [13%] | 2.02h | 40.4 |
| 32 | 2.2.7 | [V2] Definición inicial del formato para la definición de niveles |  | 0.25d | 2017-11-06 09:00 | 2017-11-06 11:00 |  | 2017-11-06 09:00 | 2017-11-06 11:00 | 14.05d | 6.75d | start no earlier than 2017-11-06 09:00 | Adrián [25%]; Alexei [25%]; Laura [25%]; Luis [25%]; Pablo [25%] | 2.5h | 50 |
| 33 | 2.2.8 | [V2] Instalación irrLicht |  | 0.5d | 2017-11-06 09:00 | 2017-11-06 13:00 |  | 2017-11-06 09:00 | 2017-11-06 13:00 | 10.8d | 0.5d | start no earlier than 2017-11-06 09:00 | Adrián [9%]; Alexei [9%]; Laura [9%]; Luis [9%]; Pablo [9%] | 1.8h | 36 |
| 34 | 2.2.9 | [V1] Aprender y plantear inicialmente el sistema de Lógica Difusa |  | 3d | 2017-11-07 09:00 | 2017-11-09 19:00 | 33, 28, 29 | 2017-11-07 09:00 | 2017-11-09 19:00 | 144d |  | start no earlier than 2017-11-07 09:00 | Adrián [28%]; Alexei [28%]; Pablo [28%] | 20.16h | 403.2 |
| 35 | 2.2.10 | [V1] Aprender y plantear inicialmente el sistema de Waypoints |  | 3d | 2017-11-07 09:00 | 2017-11-09 19:00 | 33, 28, 29 | 2017-11-07 09:00 | 2017-11-09 19:00 | 144d |  | start no earlier than 2017-11-07 09:00 | Adrián [35%]; Alexei [35%]; Pablo [35%] | 25.2h | 504 |
| 36 | 2.2.11 | [PM] Rellenar documento Gestión de riesgos |  | 0.5d | 2017-11-08 09:00 | 2017-11-08 13:00 |  | 2017-11-08 09:00 | 2017-11-08 13:00 | 11.8d | 4.5d | start no earlier than 2017-11-08 09:00 | Adrián [36%]; Alexei [36%]; Laura [66%]; Luis [66%]; Pablo [36%] | 9.6h | 192 |
| 37 | 2.2.12 | [TDS] Añadir sonidos externos a la biblioteca de sonido(1/4) |  | 0.4d | 2017-11-10 09:00 | 2017-11-10 12:12 |  | 2017-11-10 09:00 | 2017-11-10 12:12 | 143.48d | 0d | start no earlier than 2017-11-10 09:00 | Adrián [40%]; Luis [40%]; Pablo [40%] | 3.84h | 76.8 |
| 38 | 2.2.13 | [TDS] Actualizar hoja de metadatos (1/4) |  | 0.12d | 2017-11-10 12:12 | 2017-11-10 15:09 | 37 | 2017-11-10 12:12 | 2017-11-10 15:09 | 143.48d |  | start no earlier than 2017-11-10 09:00 | Adrián [13%]; Luis [13%]; Pablo [13%] | 0.37h | 7.49 |
| 39 | 2.2.14 | [TDS] Añadir elementos sonoros a la Cue Sheet (2/5) |  | 0.25d | 2017-11-10 09:00 | 2017-11-10 11:00 |  | 2017-11-10 09:00 | 2017-11-10 11:00 | 143.75d |  | start no earlier than 2017-11-10 09:00 | Luis [13%]; Pablo [13%]; Adrián [13%] | 0.78h | 15.6 |
| 40 | 2.2.15 | [V2] Realización del sistema de control del player por motor de físicas 2D, dynamic o kinematic |  | 3d | 2017-11-07 09:00 | 2017-11-09 19:00 | 27, 28, 33 | 2017-11-07 09:00 | 2017-11-09 19:00 | 10.3d | 3d | start no earlier than 2017-11-07 09:00 | Laura [52%]; Luis [52%] | 24.96h | 499.2 |
| 41 | 2.2.16 | [PD] Diseño final del logo de la empresa |  | 2d | 2017-11-13 09:00 | 2017-11-14 19:00 | 21 | 2017-11-13 09:00 | 2017-11-14 19:00 | 7.3d | 0d | start no earlier than 2017-11-13 09:00 | Alexei [21%]; Laura [21%]; Luis [21%] | 10.08h | 201.6 |
| 42 | 2.2.17 | [PM] Detallar plan iteraciones del mes de Noviembre. Creación Subtareas y precedencias en Project (2/2) |  | 0.5d | 2017-11-14 09:00 | 2017-11-14 13:00 | 19, 22 | 2017-11-14 09:00 | 2017-11-14 13:00 | 7.3d | 0d | start no earlier than 2017-11-14 09:00 | Adrián [21%]; Alexei [21%]; Laura [5%]; Luis [5%]; Pablo [5%] | 2.28h | 45.6 |
| 43 | 2.2.18 | [PM] Detallar plan iteraciones del mes de Noviembre. Asignar recursos a las tareas en Project (2/2) |  | 0.5d | 2017-11-14 15:00 | 2017-11-14 19:00 | 42 | 2017-11-14 15:00 | 2017-11-14 19:00 | 7.3d | 0d | finish no earlier than 2017-11-06 19:00 | Adrián [21%]; Alexei [21%]; Laura [5%]; Luis [5%]; Pablo [5%] | 2.28h | 45.6 |
| 44 | 2.2.19 | [PM] Realizar informe iteración 2 |  | 0.75d | 2017-11-15 09:00 | 2017-11-15 17:00 | 26, 27, 28, 40, 29, 30, 32, 36, 41, 42, 43 | 2017-11-15 09:00 | 2017-11-15 17:00 | 7.3d | 0d |  | Laura [25%]; Luis [25%]; Pablo [25%] | 4.5h | 90 |
| 45 | 2.2.20 | Objetivo iteración 2 | milestone | 0d | 2017-11-15 17:00 | 2017-11-15 17:00 | 44 | 2017-11-15 17:00 | 2017-11-15 17:00 | 7.3d |  |  |  |  |  |
| 46 | 2.3 | **Iteración 3** |  | 10d | 2017-11-16 09:00 | 2017-11-29 19:00 | 25 |  |  |  |  |  |  |  |  |
| 47 | 2.3.1 | [PM] Detallar plan iteraciones del mes de Diciembre. Creación Subtareas y precedencias en Project (1/2) |  | 1.2d | 2017-11-16 09:00 | 2017-11-17 10:36 | 22 |  |  | 18.4d | 0d |  |  |  |  |
| 48 | 2.3.2 | [PM] Detallar plan iteraciones del mes de Diciembre. Asignar recursos a las tareas en Project (1/2) |  | 1.2d | 2017-11-17 10:36 | 2017-11-20 12:12 | 47 |  |  | 18.4d | 11.35d |  |  |  |  |
| 49 | 2.3.3 | [PM] Registrar tiempos y % de realización de tareas en Project (3/5) |  | 0.45d | 2017-11-16 09:00 | 2017-11-16 12:36 | 26 |  |  | 20.35d | 13.3d |  |  |  |  |
| 50 | 2.3.4 | [V1] Acabar el documento de diseño de mecánicas de los NPCs |  | 0.5d | 2017-11-02 09:00 | 2017-11-02 13:00 |  |  |  | 149.5d |  | start no earlier than 2017-11-02 09:00 |  |  |  |
| 51 | 2.3.5 | [V1] Acabar el documento de diseño de toma de decisión: espacio y métodos |  | 0.94d | 2017-11-02 09:00 | 2017-11-02 18:31 |  |  |  | 149.06d |  | start no earlier than 2017-11-02 09:00 |  |  |  |
| 52 | 2.3.6 | [V1] Acabar el documento de diseño técnico del motor de IA |  | 0.94d | 2017-11-03 09:00 | 2017-11-03 18:31 |  |  |  | 148.06d |  | start no earlier than 2017-11-03 09:00 |  |  |  |
| 53 | 2.3.7 | [V1] Sistema de toma de decisión con Lógica Difusa |  | 6.25d | 2017-11-16 09:00 | 2017-11-24 11:00 |  |  |  | 7.05d | 0d |  |  |  |  |
| 54 | 2.3.8 | [V1] Sistema de Waypoints para pathfinding continuo |  | 7.5d | 2017-11-24 11:00 | 2017-12-05 17:00 | 53 |  |  | 7.05d | 0d |  |  |  |  |
| 55 | 2.3.9 | [V2] Mecánicas de acción |  | 1.88d | 2017-11-16 09:00 | 2017-11-17 18:02 |  |  |  | 18.92d | 11.87d |  |  |  |  |
| 56 | 2.3.10 | [V2] Formato propio para la definición de los niveles (documento con la especificación del formato) |  | 1.25d | 2017-11-16 09:00 | 2017-11-17 11:00 |  |  |  | 19.55d | 12.5d |  |  |  |  |
| 57 | 2.3.11 | [RV] Bocetos de los elementos |  | 1d | 2017-11-16 09:00 | 2017-11-16 19:00 |  |  |  | 19.8d | 12.75d |  |  |  |  |
| 58 | 2.3.12 | Objetivo iteración 3 | milestone | 0d | 2017-12-05 17:00 | 2017-12-05 17:00 | 47, 48, 49, 53, 54, 55, 56, 57 |  |  | 7.05d |  |  |  |  |  |

| ID | WBS | Task | Type | Duration | Start | Finish | Predecessors | Total slack | Free slack | Constraint |
| --- | --- | --- | --- | --- | --- | --- | --- | --- | --- | --- |
| 59 | 2.4 | **Iteración 4** |  | 10d | 2017-11-30 09:00 | 2017-12-13 19:00 | 46 |  |  |  |
| 60 | 2.4.1 | [PM] Detallar plan iteraciones del mes de Diciembre. Creación Subtareas y precedencias en Project (2/2) |  | 1.2d | 2017-11-17 17:24 | 2017-11-20 19:00 | 22 | 25.25d | 13.25d | finish no earlier than 2017-11-20 19:00 |
| 61 | 2.4.2 | [PM] Detallar plan iteraciones del mes de Diciembre. Asignar recursos a las tareas en Project (2/2) |  | 1.2d | 2017-11-21 17:24 | 2017-11-22 19:00 | 47 | 17d | 5d | finish no earlier than 2017-11-22 19:00 |
| 62 | 2.4.3 | [V1] Sistema de gestión de eventos (Trigger System/Event Manager) |  | 6.88d | 2017-11-30 09:57 | 2017-12-08 19:00 |  | 123d |  | finish no earlier than 2017-12-08 19:00 |
| 63 | 2.4.4 | [V1] Sistema de percepción sensorial (vista, oído, olfato, canales…) |  | 6.25d | 2017-11-30 09:00 | 2017-12-08 11:00 | 61 | 12d | 0d |  |
| 64 | 2.4.5 | [V2] Utilización de propiedades físicas en las mecánicas jugables |  | 1.88d | 2017-11-30 09:00 | 2017-12-01 18:02 |  | 16.37d | 4.37d |  |
| 65 | 2.4.6 | [V2] Implementación de cámara de seguimiento |  | 1.88d | 2017-11-30 09:00 | 2017-12-01 18:02 |  | 16.37d | 4.37d |  |
| 66 | 2.4.7 | [RV] Bocetos del entorno |  | 1d | 2017-11-30 09:00 | 2017-11-30 19:00 |  | 17.25d | 5.25d |  |
| 67 | 2.4.8 | Objetivo iteración 4 | milestone | 0d | 2017-12-08 11:00 | 2017-12-08 11:00 | 60, 61, 63, 64, 65, 66 | 12d |  |  |
| 68 | 2.5 | **Iteración 5** |  | 7d | 2017-12-14 09:00 | 2017-12-22 19:00 | 59 |  |  |  |
| 69 | 2.5.1 | [PM] Registrar tiempos y % de realización de tareas en Project (5/5) |  | 0.45d | 2017-12-14 09:00 | 2017-12-14 12:36 | 60 | 21.55d | 13.3d |  |
| 70 | 2.5.2 | [PM] Comparar la planificación prevista y real en Project hito 1 |  | 2.25d | 2017-12-14 09:00 | 2017-12-18 11:00 |  | 14.5d | 0d |  |
| 71 | 2.5.3 | [PM] Aplicar el modelo EVA en Project |  | 2.25d | 2017-12-14 09:00 | 2017-12-18 11:00 |  | 19.75d | 11.5d |  |
| 72 | 2.5.4 | [PM] Confeccionar Informes de iteración e informe resumen de Hito 1 |  | 2.25d | 2017-12-18 11:00 | 2017-12-20 13:00 | 70 | 14.5d | 0d |  |
| 73 | 2.5.5 | [PM] Elaborar la presentación del Hito 1 |  | 1.5d | 2017-12-20 15:00 | 2017-12-21 19:00 | 72 | 14.5d | 0d |  |
| 74 | 2.5.6 | [PM] Exponer la presentación del Hito 1 |  | 1.5d | 2017-12-22 09:00 | 2017-12-25 13:00 | 73 | 14.5d | 6.25d |  |
| 75 | 2.5.7 | [V1] Diseño de requerimientos y funciones de red |  | 1.25d | 2017-11-02 17:00 | 2017-11-03 19:00 |  | 148d |  | finish no earlier than 2017-11-03 19:00 |
| 76 | 2.5.8 | [V1] Diseño técnico del motor de red |  | 1.88d | 2017-11-02 09:57 | 2017-11-03 19:00 |  | 148d |  | finish no earlier than 2017-11-03 19:00 |
| 77 | 2.5.9 | [V1] Sistema de toma de decisión con Behaviour Trees |  | 4.38d | 2017-12-14 09:00 | 2017-12-20 12:02 |  | 17.62d | 9.37d |  |
| 78 | 2.5.10 | [V2] Diseño e implementación de la arquitectura basada en componentes (diagrama de clases e implementación) |  | 11.25d | 2017-12-14 09:00 | 2017-12-29 11:00 |  | 8.25d | 0d |  |
| 79 | 2.5.11 | [V2] Mecánicas básicas entidades sin IA |  | 2.5d | 2017-12-29 11:00 | 2018-01-02 17:00 | 78 | 8.25d | 0d |  |
| 80 | 2.5.12 | [TDS] Síntesis |  | 3.75d | 2017-12-15 16:02 | 2017-12-21 12:02 | 84 | 12.87d | 0d |  |
| 81 | 2.5.13 | [TDS] Grabaciones propias |  | 3.75d | 2017-12-15 16:02 | 2017-12-21 12:02 | 84 | 16.62d | 8.37d |  |
| 82 | 2.5.14 | [TDS] Sonidos externos |  | 3.75d | 2017-12-15 16:02 | 2017-12-21 12:02 | 84 | 16.62d | 8.37d |  |
| 83 | 2.5.15 | [TDS] Música |  | 3.75d | 2017-12-21 12:02 | 2017-12-27 10:02 | 80 | 12.87d | 4.62d |  |
| 84 | 2.5.16 | [TDS] Cue Sheet |  | 1.63d | 2017-12-14 09:00 | 2017-12-15 16:02 |  | 12.87d | 0d |  |
| 85 | 2.5.17 | [TDS] Hoja de metadatos |  | 1.88d | 2017-12-14 09:00 | 2017-12-15 18:02 |  | 20.12d | 11.87d |  |
| 86 | 2.5.18 | [TDS] Integración del motor de audio en el juego con prueba de concepto |  | 3.75d | 2017-12-14 09:00 | 2017-12-19 17:00 |  | 18.25d | 10d |  |
| 87 | 2.5.19 | [PD] Vídeo con animación del logo de la empresa |  | 7.5d | 2017-12-14 09:00 | 2017-12-25 13:00 |  | 14.5d | 6.25d |  |
| 88 | 2.5.20 | Objetivo iteración 5 | milestone | 0d | 2018-01-02 17:00 | 2018-01-02 17:00 | 69, 70, 71, 72, 73, 74, 77, 78, 79, 80, 81, 82, 83, 84, 85, 86, 87 | 8.25d |  |  |

| ID | WBS | Task | Duration | Start | Finish | Predecessors | Total slack |
| --- | --- | --- | --- | --- | --- | --- | --- |
| 89 | 3 | **Hito 2** | 16d | 2018-01-07 09:00 | 2018-01-26 19:00 | 12 |  |
| 90 | 3.1 | [PM] Revisar especificación proyecto | 3d | 2018-01-08 09:00 | 2018-01-10 19:00 |  | 77.5d |
| 91 | 3.2 | [PM] Reestimar proyecto | 3d | 2018-01-08 09:00 | 2018-01-10 19:00 |  | 77.5d |
| 92 | 3.3 | [PM] Detallar plan iteraciones del mes de Enero. Creación Subtareas y precedencias en Project | 1d | 2018-01-08 09:00 | 2018-01-08 19:00 |  | 79.5d |
| 93 | 3.4 | [PM] Detallar plan iteraciones del mes de Enero. Asignar recursos a las tareas en Project | 1d | 2018-01-08 09:00 | 2018-01-08 19:00 |  | 79.5d |
| 94 | 3.5 | [PM] Registrar tiempos y % de realización de tareas en Project | 0.63d | 2018-01-08 09:00 | 2018-01-08 16:02 |  | 79.87d |
| 95 | 3.6 | [PM] Comparar la planificación prevista y real en Project hito 2 | 0.63d | 2018-01-08 09:00 | 2018-01-08 16:02 |  | 79.87d |
| 96 | 3.7 | [PM] Confeccionar Informes de iteración e informe resumen de Hito 2 | 0.63d | 2018-01-08 09:00 | 2018-01-08 16:02 |  | 79.87d |
| 97 | 3.8 | [V1] Sistema de depuración visual in-game de la IA | 3.75d | 2018-01-08 09:00 | 2018-01-11 17:00 |  | 76.75d |
| 98 | 3.9 | [V1] Multijugador en tiempo real | 11.25d | 2018-01-08 09:00 | 2018-01-23 11:00 |  | 69.25d |
| 99 | 3.10 | [V2] Power-ups y elementos adicionales | 5d | 2018-01-08 09:00 | 2018-01-12 19:00 |  | 75.5d |
| 100 | 3.11 | [V2] Creación de un cargador de niveles | 3.13d | 2018-01-08 09:00 | 2018-01-11 10:02 |  | 77.37d |
| 101 | 3.12 | [V2] Gestión de colisiones de la cámara (sistema de depuración para ver colisiones) | 1.88d | 2018-01-08 09:00 | 2018-01-09 18:02 |  | 78.62d |
| 102 | 3.13 | [V2] Integración de librería para GUI | 0.63d | 2018-01-08 09:00 | 2018-01-08 16:02 |  | 79.87d |
| 103 | 4 | **Hito 3** | 35d | 2018-02-07 09:00 | 2018-03-27 19:00 | 89 |  |
| 104 | 4.1 | [PM] Detallar plan iteraciones del mes de Febrero-Marzo. Creación Subtareas y precedencias en Project | 1d | 2018-02-07 09:00 | 2018-02-07 19:00 |  | 68.75d |
| 105 | 4.2 | [PM] Detallar plan iteraciones del mes de Febrero-Marzo Asignar recursos a las tareas en Project | 1d | 2018-02-07 09:00 | 2018-02-07 19:00 |  | 68.75d |
| 106 | 4.3 | [PM] Registrar tiempos y % de realización de tareas en Project | 0.63d | 2018-02-07 09:00 | 2018-02-07 16:02 |  | 69.12d |
| 107 | 4.4 | [PM] Comparar la planificación prevista y real en Project hito 3 | 0.63d | 2018-02-07 09:00 | 2018-02-07 16:02 |  | 69.12d |
| 108 | 4.5 | [PM] Confeccionar Informes de iteración e informe resumen de Hito 3 | 0.63d | 2018-02-07 09:00 | 2018-02-07 16:02 |  | 69.12d |
| 109 | 4.6 | [PM] Elaborar la presentación del Hito 3 | 0.75d | 2018-02-07 09:00 | 2018-02-07 17:00 |  | 69d |
| 110 | 4.7 | [PM] Exponer la presentación del Hito 3 | 0.75d | 2018-02-07 09:00 | 2018-02-07 17:00 |  | 69d |
| 111 | 4.8 | [TAG] Estructura básica del nodo (array de hijos, puntero a padre, puntero a entidad, funcionalidad básica -constructor, destructor, gets, sets, manejo de hijos….) | 0.5d | 2018-02-07 09:00 | 2018-02-07 13:00 |  | 69.25d |
| 112 | 4.9 | [TAG] Recorrido-dibujado del árbol | 0.5d | 2018-02-07 09:00 | 2018-02-07 13:00 |  | 69.25d |
| 113 | 4.10 | [TAG] Estructura básica de la entidad (Constructor, destructor, funciones… todas virtuales, vacías) | 0.5d | 2018-02-07 09:00 | 2018-02-07 13:00 |  | 69.25d |
| 114 | 4.11 | [TAG] Matrices (model, view, projection) y pila estáticas y su manejo | 0.63d | 2018-02-07 09:00 | 2018-02-07 16:02 |  | 69.12d |
| 115 | 4.12 | [TAG] Estructura básica de la transformación (Constructor, destructor, matriz transformación…) | 0.5d | 2018-02-07 09:00 | 2018-02-07 13:00 |  | 69.25d |
| 116 | 4.13 | [TAG] Operaciones de transformación (trasladar, rotar, escalar, identidad, trasponer, invertir, todas con GLM) | 0.75d | 2018-02-07 09:00 | 2018-02-07 17:00 |  | 69d |
| 117 | 4.14 | [TAG] Dibujado (begindraw, enddraw, manejo pila y matriz model) | 0.75d | 2018-02-07 09:00 | 2018-02-07 17:00 |  | 69d |
| 118 | 4.15 | [TAG] Estructura básica de la cámara (Constructor, destructor, matriz proyección) | 0.38d | 2018-02-07 09:00 | 2018-02-07 12:02 |  | 69.37d |
| 119 | 4.16 | [TAG] Rellenar matriz perspectiva (con glm) | 0.25d | 2018-02-07 09:00 | 2018-02-07 11:00 |  | 69.5d |
| 120 | 4.17 | [TAG] Estructura básica de la luz (Constructor, destructor) | 0.38d | 2018-02-07 09:00 | 2018-02-07 12:02 |  | 69.37d |
| 121 | 4.18 | [TAG] Datos y funciones luz puntual | 0.38d | 2018-02-07 09:00 | 2018-02-07 12:02 |  | 69.37d |
| 122 | 4.19 | [TAG] Estructura básica de la malla (Constructor, destructor) | 0.38d | 2018-02-07 09:00 | 2018-02-07 12:02 |  | 69.37d |
| 123 | 4.20 | [TAG] Datos de mallas, texturas, materiales… (llamadas al gestor de recursos) | 0.5d | 2018-02-07 09:00 | 2018-02-07 13:00 |  | 69.25d |
| 124 | 4.21 | [TAG] Dibujado (begindraw, enddraw, matriz model…) | 0.63d | 2018-02-07 09:00 | 2018-02-07 16:02 |  | 69.12d |
| 125 | 4.22 | [TAG] Estructura básica del gestor de recursos (constructor, destructor, vectores de recursos) | 0.5d | 2018-02-07 09:00 | 2018-02-07 13:00 |  | 69.25d |
| 126 | 4.23 | [TAG] Obtener recurso (gestión adecuada de memoria) | 0.75d | 2018-02-07 09:00 | 2018-02-07 17:00 |  | 69d |
| 127 | 4.24 | [TAG] Estructura básica del recurso (constructor, destructor. Es virtual, vacío) | 0.38d | 2018-02-07 09:00 | 2018-02-07 12:02 |  | 69.37d |
| 128 | 4.25 | [TAG] Estructura básica de la malla (constructor, destructor) | 0.5d | 2018-02-07 09:00 | 2018-02-07 13:00 |  | 69.25d |
| 129 | 4.26 | [TAG] Lectura de disco (con assimp) | 0.75d | 2018-02-07 09:00 | 2018-02-07 17:00 |  | 69d |
| 130 | 4.27 | [TAG] Creación de buffers de vértices, normales, índices… y relleno | 1d | 2018-02-07 09:00 | 2018-02-07 19:00 |  | 68.75d |
| 131 | 4.28 | [TAG] Dibujado de las mallas (draw, con paso de los buffers a OpenGL) | 1d | 2018-02-07 09:00 | 2018-02-07 19:00 |  | 68.75d |
| 132 | 4.29 | [TAG] Estructura básica de la textura (constructor, destructor) | 0.25d | 2018-02-07 09:00 | 2018-02-07 11:00 |  | 69.5d |
| 133 | 4.30 | [TAG] Leer de disco (con librería) y rellenar buffers | 0.75d | 2018-02-07 09:00 | 2018-02-07 17:00 |  | 69d |
| 134 | 4.31 | [TAG] Dibujado (preparar las texturas y cargarlas en OpenGL) | 1d | 2018-02-07 09:00 | 2018-02-07 19:00 |  | 68.75d |
| 135 | 4.32 | [TAG] Estructura básica del material (constructor, destructor) | 0.25d | 2018-02-07 09:00 | 2018-02-07 11:00 |  | 69.5d |
| 136 | 4.33 | [TAG] Leer de disco (con librería o con parser propio) y rellenar valores | 0.63d | 2018-02-07 09:00 | 2018-02-07 16:02 |  | 69.12d |
| 137 | 4.34 | [TAG] Dibujado (preparar los materiales y cargarlos en OpenGL) | 0.5d | 2018-02-07 09:00 | 2018-02-07 13:00 |  | 69.25d |
| 138 | 4.35 | [TAG] Estructura básica del shader (constructor, destructor) | 0.5d | 2018-02-07 09:00 | 2018-02-07 13:00 |  | 69.25d |
| 139 | 4.36 | [TAG] Lectura de disco (con parser propio) y guardarlo | 0.88d | 2018-02-07 09:00 | 2018-02-07 18:02 |  | 68.87d |
| 140 | 4.37 | [TAG] Estructura básica de la fachada (constructor, destructor, inicialización motor y openGL) | 0.75d | 2018-02-07 09:00 | 2018-02-07 17:00 |  | 69d |
| 141 | 4.38 | [TAG] Funciones para crear cámaras y gestionarlas (manejo de las cámaras, registro, cálculo de la matriz view) | 1.25d | 2018-02-07 09:00 | 2018-02-08 11:00 |  | 68.5d |
| 142 | 4.39 | [TAG] Funciones para crear luces y gestionarlas (manejo de las luces registro, cálculo de la matriz light) | 0.75d | 2018-02-07 09:00 | 2018-02-07 17:00 |  | 69d |
| 143 | 4.40 | [TAG] Funciones para crear transformaciones (creación de varios nodos con las transformaciones, manejo de las transformaciones) | 0.75d | 2018-02-07 09:00 | 2018-02-07 17:00 |  | 69d |
| 144 | 4.41 | [TAG] Funciones para crear mallas y animaciones | 0.75d | 2018-02-07 09:00 | 2018-02-07 17:00 |  | 69d |
| 145 | 4.42 | [TAG] Funciones para crear shaders y gestionarlos | 0.75d | 2018-02-07 09:00 | 2018-02-07 17:00 |  | 69d |
| 146 | 4.43 | [TAG] Shader básico (Sombreado de Phong, reflexión de Phong) con materiales | 0.63d | 2018-02-07 09:00 | 2018-02-07 16:02 |  | 69.12d |
| 147 | 4.44 | [TAG] Integración con la aplicación | 3.75d | 2018-02-07 09:00 | 2018-02-12 17:00 |  | 66d |
| 148 | 4.45 | [TAG] Realización de una fachada genérica | 1.88d | 2018-02-07 09:00 | 2018-02-08 18:02 |  | 67.87d |
| 149 | 4.46 | [V1] Gestión de recursos de IA con Level-of-Detail (LoD) | 6.25d | 2018-02-07 09:00 | 2018-02-15 11:00 |  | 63.5d |
| 150 | 4.47 | [V1] Sistema de predicción de movimiento multijugador en tiempo real | 3.75d | 2018-02-07 09:00 | 2018-02-12 17:00 |  | 66d |
| 151 | 4.48 | [V1] Sistema de depuración visual del motor de Red | 3.75d | 2018-02-07 09:00 | 2018-02-12 17:00 |  | 66d |
| 152 | 4.49 | [V2] Diseño y creación de niveles | 5d | 2018-02-07 09:00 | 2018-02-13 19:00 |  | 64.75d |
| 153 | 4.50 | [V2] Implementación de menús | 3.75d | 2018-02-07 09:00 | 2018-02-12 17:00 |  | 66d |
| 154 | 4.51 | [V2] Implementación del HUD | 2.5d | 2018-02-07 09:00 | 2018-02-09 13:00 |  | 67.25d |
| 155 | 4.52 | [V2] Implementación de clipping (comparativa de FPS con/sin oclusiones) | 1.25d | 2018-02-07 09:00 | 2018-02-08 11:00 |  | 68.5d |
| 156 | 4.53 | [V2] Oclusiones mediante tecnicas de rasterización (comparativa de FPS con/sin oclusiones) | 1.25d | 2018-02-07 09:00 | 2018-02-08 11:00 |  | 68.5d |
| 157 | 4.54 | [V2] Sistema de Level-Of-Detail (LoD) para la selección de la malla gráfica de los objetos | 1.88d | 2018-02-07 09:00 | 2018-02-08 18:02 |  | 67.87d |
| 158 | 4.55 | [V2] Sistema de Level-Of-Detail continuo (CLoD) para el terreno | 3.13d | 2018-02-07 09:00 | 2018-02-12 10:02 |  | 66.62d |

| ID | WBS | Task | Duration | Start | Finish | Predecessors | Total slack |
| --- | --- | --- | --- | --- | --- | --- | --- |
| 159 | 4.56 | [V2] Creación e implementación del skybox | 3.13d | 2018-02-07 09:00 | 2018-02-12 10:02 |  | 66.62d |
| 160 | 4.57 | [TDS] Resto de la biblioteca (máx. 1/3), cuesheet y metadatos finales | 7.5d | 2018-02-07 09:00 | 2018-02-16 13:00 |  | 62.25d |
| 161 | 4.58 | [PD] Cartel juego/proyecto | 3.75d | 2018-02-07 09:00 | 2018-02-12 17:00 |  | 66d |
| 162 | 4.59 | [PD] Trailer juego/proyecto | 11.25d | 2018-02-07 09:00 | 2018-02-22 11:00 |  | 58.5d |
| 163 | 4.60 | [RV] Modelado de los personajes | 7.5d | 2018-02-07 09:00 | 2018-02-16 13:00 |  | 62.25d |
| 164 | 4.61 | [RV] Texturizado de los personajes | 6d | 2018-02-07 09:00 | 2018-02-14 19:00 |  | 63.75d |
| 165 | 4.62 | [RV] Modelado del entorno y elementos | 11d | 2018-02-07 09:00 | 2018-02-21 19:00 |  | 58.75d |
| 166 | 5 | **Hito 4** | 46d | 2018-03-28 09:00 | 2018-05-30 19:00 | 103 |  |
| 167 | 5.1 | [PM] Detallar plan iteraciones del mes de Abril-Mayo. Creación Subtareas y precedencias en Project | 1d | 2018-03-28 09:00 | 2018-03-28 19:00 |  | 45d |
| 168 | 5.2 | [PM] Detallar plan iteraciones del mes de Abril-Mayo. Asignar recursos a las tareas en Project | 1d | 2018-03-28 09:00 | 2018-03-28 19:00 |  | 45d |
| 169 | 5.3 | [PM] Registrar tiempos y % de realización de tareas en Project | 0.63d | 2018-03-28 09:00 | 2018-03-28 16:02 |  | 45.37d |
| 170 | 5.4 | [PM] Comparar la planificación prevista y real en Project hito 4 | 0.63d | 2018-03-28 09:00 | 2018-03-28 16:02 |  | 45.37d |
| 171 | 5.5 | [PM] Confeccionar Informes de iteración e informe resumen de Hito 4 | 0.63d | 2018-03-28 09:00 | 2018-03-28 16:02 |  | 45.37d |
| 172 | 5.6 | [PM] Elaborar la presentación del Hito 4 | 0.75d | 2018-03-28 09:00 | 2018-03-28 17:00 |  | 45.25d |
| 173 | 5.7 | [PM] Exponer la presentación del Hito 4 | 0.75d | 2018-03-28 09:00 | 2018-03-28 17:00 |  | 45.25d |
| 174 | 5.8 | [TAG] Datos y funciones luz dirigida | 0.63d | 2018-03-28 09:00 | 2018-03-28 16:02 |  | 45.37d |
| 175 | 5.9 | [TAG] Otros tipos de luces | 11.25d | 2018-03-28 09:00 | 2018-04-12 11:00 |  | 34.75d |
| 176 | 5.10 | [TAG] Estructura básica de la animación (Constructor, destructor) | 0.5d | 2018-03-28 09:00 | 2018-03-28 13:00 |  | 45.5d |
| 177 | 5.11 | [TAG] Datos de animaciones, mallas, texturas, materiales (multiples, con llamadas al gestor de recursos) | 0.63d | 2018-03-28 09:00 | 2018-03-28 16:02 |  | 45.37d |
| 178 | 5.12 | [TAG] Getión temporal de las animaciones (frames…) | 0.75d | 2018-03-28 09:00 | 2018-03-28 17:00 |  | 45.25d |
| 179 | 5.13 | [TAG] Dibujado (begindraw, enddraw, matriz model…) | 0.75d | 2018-03-28 09:00 | 2018-03-28 17:00 |  | 45.25d |
| 180 | 5.14 | [TAG] Shader Cartoon | 1.88d | 2018-03-28 09:00 | 2018-03-29 18:02 |  | 44.12d |
| 181 | 5.15 | [TAG] Shader light mapping | 1.88d | 2018-03-28 09:00 | 2018-03-29 18:02 |  | 44.12d |
| 182 | 5.16 | [TAG] Shader Deferred Shading | 2.75d | 2018-03-28 09:00 | 2018-03-30 17:00 |  | 43.25d |
| 183 | 5.17 | [TAG] Bounding boxes (incluye retocar nodos, entidades y recursos malla) | 1.5d | 2018-03-28 09:00 | 2018-03-29 13:00 |  | 44.5d |
| 184 | 5.18 | [TAG] Backface culling | 0.5d | 2018-03-28 09:00 | 2018-03-28 13:00 |  | 45.5d |
| 185 | 5.19 | [TAG] Frustum culling | 2.5d | 2018-03-28 09:00 | 2018-03-30 13:00 |  | 43.5d |
| 186 | 5.20 | [TAG] Shadow mapping | 3.13d | 2018-03-28 09:00 | 2018-04-02 10:02 |  | 42.87d |
| 187 | 5.21 | [TAG] Sombras volumétricas | 4.38d | 2018-03-28 09:00 | 2018-04-03 12:02 |  | 41.62d |
| 188 | 5.22 | [TAG] Sistema de partículas (sólo la incorporación en el motor) | 3.13d | 2018-03-28 09:00 | 2018-04-02 10:02 |  | 42.87d |
| 189 | 5.23 | [TAG] Billboards (sólo la parte de visualización) | 1.25d | 2018-03-28 09:00 | 2018-03-29 11:00 |  | 44.75d |
| 190 | 5.24 | [TAG] Skybox (sólo la incorporación en el motor) | 0.63d | 2018-03-28 09:00 | 2018-03-28 16:02 |  | 45.37d |
| 191 | 5.25 | [TAG] Otras | 4d | 2018-03-28 09:00 | 2018-04-02 19:00 |  | 42d |
| 192 | 5.26 | [V2] Multiplataforma con soporte para Windows | 5d | 2018-03-28 09:00 | 2018-04-03 19:00 |  | 41d |
| 193 | 5.27 | [V2] Implementación de nubes | 1.88d | 2018-03-28 09:00 | 2018-03-29 18:02 |  | 44.12d |
| 194 | 5.28 | [V2] Implementación de sistemas de partículas | 1.88d | 2018-03-28 09:00 | 2018-03-29 18:02 |  | 44.12d |
| 195 | 5.29 | [TDS] Integración de sonido y música en el juego | 3.75d | 2018-03-28 09:00 | 2018-04-02 17:00 |  | 42.25d |
| 196 | 5.30 | [TDS] Post producción (mezcla y masterización in-game) | 3.75d | 2018-03-28 09:00 | 2018-04-02 17:00 |  | 42.25d |
| 197 | 5.31 | [PD] Making of juego/proyecto | 11.25d | 2018-03-28 09:00 | 2018-04-12 11:00 |  | 34.75d |
| 198 | 5.32 | [PD] Créditos | 3.75d | 2018-03-28 09:00 | 2018-04-02 17:00 |  | 42.25d |
| 199 | 5.33 | [RV] Rigging de los personajes | 1d | 2018-03-28 09:00 | 2018-03-28 19:00 |  | 45d |
| 200 | 5.34 | [RV] Captura de movimiento | 5d | 2018-03-28 09:00 | 2018-04-03 19:00 |  | 41d |
| 201 | 5.35 | [RV] Animación de los personajes | 10d | 2018-03-28 09:00 | 2018-04-10 19:00 |  | 36d |
| 202 | 5.36 | [RV] Texturizado del entorno y elementos | 6.5d | 2018-03-28 09:00 | 2018-04-05 13:00 |  | 39.5d |
